# 陆缆及气象站施工

Schedule from a web Gantt chart, 2025-12-17 to 2025-12-28.
Every day is a working day

## Schedule

| ID | WBS | Task | Duration | Start | Finish | Predecessors | Status |
| --- | --- | --- | --- | --- | --- | --- | --- |
| 2 | 1 | **陆缆** | 12d | 2025-12-17 | 2025-12-28 |  |  |
| 3 | 1.1 | **4-7号井** | 1d | 2025-12-18 | 2025-12-18 |  |  |
| 4 | 1.1.1 | **井体** | 1d | 2025-12-18 | 2025-12-18 |  |  |
| 5 | 1.1.1.1 | 土方开挖及混凝土垫层浇筑 | 1d | 2025-12-18 | 2025-12-18 |  |  |
| 6 | 1.1.1.2 | 底模钢筋模板支设 | 1d | 2025-12-19 | 2025-12-19 | 5 | waiting |
| 7 | 1.1.1.3 | 底模浇筑 | 1d | 2025-12-20 | 2025-12-20 | 6 | waiting |
| 8 | 1.1.1.4 | 井身钢筋模板支设 | 1d | 2025-12-21 | 2025-12-21 | 7 | waiting |
| 9 | 1.1.1.5 | 井身浇筑 | 1d | 2025-12-22 | 2025-12-22 | 8 | waiting |
| 10 | 1.1.2 | **铺管包封** | 1d | 2025-12-22 | 2025-12-22 |  |  |
| 11 | 1.1.2.1 | 土方开挖 | 1d | 2025-12-22 | 2025-12-22 |  |  |
| 12 | 1.1.2.2 | 铺管 | 1d | 2025-12-22 | 2025-12-22 |  |  |
| 13 | 1.1.2.3 | 包封 | 1d | 2025-12-22 | 2025-12-22 |  |  |
| 14 | 1.2 | **1-3号井、8号井** | 5d | 2025-12-24 | 2025-12-28 |  |  |
| 15 | 1.2.1 | 土方开挖及混凝土垫层浇筑 | 1d | 2025-12-24 | 2025-12-24 |  |  |
| 16 | 1.2.2 | 底模钢筋模板支设 | 1d | 2025-12-25 | 2025-12-25 | 15 | waiting |
| 17 | 1.2.3 | 底模浇筑 | 1d | 2025-12-26 | 2025-12-26 | 16 | waiting |
| 18 | 1.2.4 | 井身钢筋模板支设 | 1d | 2025-12-27 | 2025-12-27 | 17 | waiting |
| 19 | 1.2.5 | 井身浇筑 | 1d | 2025-12-28 | 2025-12-28 | 18 | waiting |
| 20 | 1.3 | **9-14号井** | 3d | 2025-12-18 | 2025-12-20 |  |  |
| 21 | 1.3.1 | 底模浇筑 | 1d | 2025-12-18 | 2025-12-18 |  |  |
| 22 | 1.3.2 | 井身钢筋模板支设 | 1d | 2025-12-19 | 2025-12-19 | 21 | waiting |
| 23 | 1.3.3 | 井身浇筑 | 1d | 2025-12-20 | 2025-12-20 | 22 | waiting |
| 24 | 1.4 | **15-18号井** | 2d | 2025-12-17 | 2025-12-18 |  |  |
| 25 | 1.4.1 | 井身钢筋模板支设 | 1d | 2025-12-17 | 2025-12-17 |  |  |
| 26 | 1.4.2 | 井身浇筑 | 1d | 2025-12-18 | 2025-12-18 | 25 | waiting |
| 27 | 1.5 | 19-26号井（已完成） | 1d | 2025-12-17 | 2025-12-17 |  |  |
| 28 | 1.6 | 28-31号井（已完成） | 1d | 2025-12-17 | 2025-12-17 |  |  |

| ID | WBS | Task | Duration | Start | Finish | Predecessors | Status |
| --- | --- | --- | --- | --- | --- | --- | --- |
| 29 | 1.7 | **32-36号井** | 1d | 2025-12-18 | 2025-12-18 |  |  |
| 30 | 1.7.1 | 井身浇筑 | 1d | 2025-12-18 | 2025-12-18 |  |  |
| 31 | 2 | **气象站** | 12d | 2025-12-17 | 2025-12-28 |  |  |
| 32 | 2.1 | **挡土墙** | 6d | 2025-12-17 | 2025-12-22 |  |  |
| 33 | 2.1.1 | 挡土墙砌筑 | 3d | 2025-12-17 | 2025-12-19 |  |  |
| 34 | 2.1.2 | 挡土墙土方回填 | 1d | 2025-12-22 | 2025-12-22 |  |  |
| 35 | 2.2 | **气象站基础** | 4d | 2025-12-23 | 2025-12-26 |  |  |
| 36 | 2.2.1 | 基础开挖回填及垫层浇筑 | 1d | 2025-12-23 | 2025-12-23 | 34 | waiting |
| 37 | 2.2.2 | 基础钢筋模板 | 2d | 2025-12-24 | 2025-12-25 | 36 | waiting |
| 38 | 2.2.3 | 基础浇筑 | 1d | 2025-12-26 | 2025-12-26 | 37 | waiting |
| 39 | 2.3 | 栅栏安装 | 2d | 2025-12-27 | 2025-12-28 | 38 | waiting |
